# paas云平台3.0

Schedule from MS Project, 2018-02-26 to 2018-04-17.

## Calendars

- 国家法定节假日日历: Mon-Fri 08:00-12:00, 13:00-17:00; Sat-Sun off. Exceptions (off unless hours are given): 2018-04-05 to 2018-04-07 (清明), 2018-04-08 08:00-12:00, 13:00-17:00 (清明调休).

## Resources

| Resource |
| --- |
| 高峰 |
| 于利龙 |
| 苑逢瑞 |
| 谢发扬 |
| 程东东 |

## Schedule

| ID | WBS | Task | Duration | Start | Finish | Predecessors | Total slack | Free slack | Constraint | Resources | Work |
| --- | --- | --- | --- | --- | --- | --- | --- | --- | --- | --- | --- |
| 1 | 1 | **阶段一 登录、注册、找回密码** | 5d | 2018-02-26 | 2018-03-02 |  | 0d |  |  |  | 200h |
| 2 | 1.1 | **前端01** | 5d | 2018-02-26 | 2018-03-02 |  | 0d |  |  |  | 120h |
| 3 | 1.1.1 | 登录功能、通用组件 | 5d | 2018-02-26 | 2018-03-02 |  | 0d |  |  | 高峰 | 40h |
| 4 | 1.1.2 | 注册 | 5d | 2018-02-26 | 2018-03-02 |  | 0d |  |  | 苑逢瑞 | 40h |
| 5 | 1.1.3 | 找回密码 | 5d | 2018-02-26 | 2018-03-02 |  | 0d |  |  | 于利龙 | 40h |
| 6 | 1.2 | **后端01** | 5d | 2018-02-26 | 2018-03-02 |  | 10d | 0d |  |  | 80h |
| 7 | 1.2.1 | 验证逻辑,联调 | 5d | 2018-02-26 | 2018-03-02 |  | 10d |  |  | 谢发扬; 程东东 | 80h |
| 8 | 2 | **阶段二 个人中心与产品服务** | 7d | 2018-03-05 | 2018-03-13 |  | 0d |  |  |  | 256h |
| 9 | 2.1 | **前端02** | 7d | 2018-03-05 | 2018-03-13 | 2 | 0d |  |  |  | 144h |
| 10 | 2.1.1 | 个人信息、产品服务 | 7d | 2018-03-05 | 2018-03-13 |  | 0d |  |  | 于利龙 | 56h |
| 11 | 2.1.2 | 修改密码、我的企业、登陆日志 | 6d | 2018-03-05 | 2018-03-12 |  | 1d |  |  | 苑逢瑞 | 48h |
| 12 | 2.1.3 | 我的应用、通用组件 | 5d | 2018-03-05 | 2018-03-09 |  | 2d |  |  | 高峰 | 40h |
| 13 | 2.2 | **后端02** | 7d | 2018-03-05 | 2018-03-13 | 6 | 10d | 0d |  |  | 112h |
| 14 | 2.2.1 | 原有接口逻辑验证修改,登录日志 | 2d | 2018-03-05 | 2018-03-06 |  | 10d | 0d |  | 谢发扬 | 16h |
| 15 | 2.2.2 | 我的企业新接口开发 | 2d | 2018-03-07 | 2018-03-08 | 14 | 10d | 0d | start no earlier than 2018-03-05 | 谢发扬 | 16h |
| 16 | 2.2.3 | 应用列表新接口开发 | 3d | 2018-03-09 | 2018-03-13 | 15 | 10d |  | finish no earlier than 2018-03-07 | 谢发扬 | 24h |
| 17 | 2.2.4 | 申请使用应用接口开发 | 4d | 2018-03-05 | 2018-03-08 |  | 10d | 0d | start no earlier than 2018-03-05 | 程东东 | 32h |
| 18 | 2.2.5 | 个人信息修改添加字段 | 3d | 2018-03-09 | 2018-03-13 | 17 | 10d |  | finish no earlier than 2018-03-07 | 程东东 | 24h |
| 19 | 3 | **阶段三 主页、企业应用** | 8d | 2018-03-14 | 2018-03-23 |  | 0d |  |  |  | 248h |
| 20 | 3.1 | **前端03** | 8d | 2018-03-14 | 2018-03-23 | 9 | 0d |  |  |  | 168h |
| 21 | 3.1.1 | 主页模块、通用组件 | 8d | 2018-03-14 | 2018-03-23 |  | 0d |  |  | 高峰 | 64h |
| 22 | 3.1.2 | 用户和角色模块 | 8d | 2018-03-14 | 2018-03-23 |  | 0d |  |  | 于利龙 | 64h |
| 23 | 3.1.3 | 概览、用户审核、更换管理模块 | 5d | 2018-03-14 | 2018-03-20 |  | 3d |  |  | 苑逢瑞 | 40h |
| 24 | 3.2 | **后端03** | 5d | 2018-03-14 | 2018-03-20 | 13 | 10d | 0d |  |  | 80h |
| 25 | 3.2.1 | 后端接口 | 5d | 2018-03-14 | 2018-03-20 |  | 10d |  |  | 谢发扬 | 40h |
| 26 | 3.2.2 | 后端接口 | 5d | 2018-03-14 | 2018-03-20 |  | 10d |  |  | 程东东 | 40h |

| ID | WBS | Task | Duration | Start | Finish | Predecessors | Total slack | Constraint | Resources | Work |
| --- | --- | --- | --- | --- | --- | --- | --- | --- | --- | --- |
| 27 | 4 | **阶段四 企业管理、企业数据** | 14d | 2018-03-21 | 2018-04-10 |  | 0d |  |  | 320h |
| 28 | 4.1 | **前端04** | 11d | 2018-03-26 | 2018-04-10 | 20 | 0d |  |  | 240h |
| 29 | 4.1.1 | 部门管理、图表组件等 | 9d | 2018-03-26 | 2018-04-06 |  | 2d |  | 高峰 | 80h |
| 30 | 4.1.2 | 用户管理、登录日志、操作日志 | 8d | 2018-03-26 | 2018-04-04 |  | 3d |  | 于利龙 | 64h |
| 31 | 4.1.3 | 用户审核、企业设置、更换管理员、统计信息 | 11d | 2018-03-26 | 2018-04-10 |  | 0d | start no earlier than 2018-03-26 | 苑逢瑞 | 96h |
| 32 | 4.2 | **后端04** | 5d | 2018-03-21 | 2018-03-27 | 24 | 9d |  |  | 80h |
| 33 | 4.2.1 | 后端接口 | 5d | 2018-03-21 | 2018-03-27 |  | 9d |  | 谢发扬 | 40h |
| 34 | 4.2.2 | 后端接口 | 5d | 2018-03-21 | 2018-03-27 |  | 9d |  | 程东东 | 40h |
| 35 | 5 | **阶段五 bug修复阶段** | 5d | 2018-04-11 | 2018-04-17 | 27 | 0d |  |  | 200h |
| 36 | 5.1 | 前端bug | 5d | 2018-04-11 | 2018-04-17 |  | 0d |  | 高峰; 于利龙; 苑逢瑞 | 120h |
| 37 | 5.2 | 后端bug | 5d | 2018-04-11 | 2018-04-17 |  | 0d |  | 程东东; 谢发扬 | 80h |
