# paas云平台3.0

Schedule from MS Project, 2018-02-26 to 2018-04-17.

## Calendars

- 国家法定节假日日历: Mon-Fri 08:00-12:00, 13:00-17:00; Sat-Sun off. Exceptions (off unless hours are given): 2018-04-05 to 2018-04-07 (清明), 2018-04-08 08:00-12:00, 13:00-17:00 (清明调休).

## Resources

| Resource |
| --- |
| 高峰 |
| 于利龙 |
| 苑逢瑞 |
| 谢发扬 |
| 程东东 |

## Schedule

| ID | WBS | Task | Duration | Start | Finish | Predecessors | Total slack | Free slack | Resources | Work |
| --- | --- | --- | --- | --- | --- | --- | --- | --- | --- | --- |
| 1 | 1 | **阶段一 登录、注册、找回密码** | 5d | 2018-02-26 | 2018-03-02 |  | 0d |  |  | 200h |
| 2 | 1.1 | **前端01** | 5d | 2018-02-26 | 2018-03-02 |  | 0d |  |  | 120h |
| 3 | 1.1.1 | 登录功能、通用组件 | 5d | 2018-02-26 | 2018-03-02 |  | 0d |  | 高峰 | 40h |
| 4 | 1.1.2 | 注册 | 5d | 2018-02-26 | 2018-03-02 |  | 0d |  | 苑逢瑞 | 40h |
| 5 | 1.1.3 | 找回密码 | 5d | 2018-02-26 | 2018-03-02 |  | 0d |  | 于利龙 | 40h |
| 6 | 1.2 | **后端01** | 5d | 2018-02-26 | 2018-03-02 |  | 12d | 0d |  | 80h |
| 7 | 1.2.1 | 后端接口 | 5d | 2018-02-26 | 2018-03-02 |  | 12d |  | 谢发扬 | 40h |
| 8 | 1.2.2 | 后端接口 | 5d | 2018-02-26 | 2018-03-02 |  | 12d |  | 程东东 | 40h |
| 9 | 2 | **阶段二 个人中心与产品服务** | 7d | 2018-03-05 | 2018-03-13 |  | 0d |  |  | 224h |
| 10 | 2.1 | **前端02** | 7d | 2018-03-05 | 2018-03-13 | 2 | 0d |  |  | 144h |
| 11 | 2.1.1 | 个人信息、产品服务 | 7d | 2018-03-05 | 2018-03-13 |  | 0d |  | 于利龙 | 56h |
| 12 | 2.1.2 | 修改密码、我的企业、登陆日志 | 6d | 2018-03-05 | 2018-03-12 |  | 1d |  | 苑逢瑞 | 48h |
| 13 | 2.1.3 | 我的应用、通用组件 | 5d | 2018-03-05 | 2018-03-09 |  | 2d |  | 高峰 | 40h |
| 14 | 2.2 | **后端02** | 5d | 2018-03-05 | 2018-03-09 | 6 | 12d | 0d |  | 80h |
| 15 | 2.2.1 | 后端接口 | 5d | 2018-03-05 | 2018-03-09 |  | 12d |  | 谢发扬 | 40h |
| 16 | 2.2.2 | 后端接口 | 5d | 2018-03-05 | 2018-03-09 |  | 12d |  | 程东东 | 40h |
| 17 | 3 | **阶段三 主页、企业应用** | 10d | 2018-03-12 | 2018-03-23 |  | 2d |  |  | 248h |
| 18 | 3.1 | **前端03** | 8d | 2018-03-14 | 2018-03-23 | 10 | 0d |  |  | 168h |
| 19 | 3.1.1 | 主页模块、通用组件 | 8d | 2018-03-14 | 2018-03-23 |  | 0d |  | 高峰 | 64h |
| 20 | 3.1.2 | 用户和角色模块 | 8d | 2018-03-14 | 2018-03-23 |  | 0d |  | 于利龙 | 64h |
| 21 | 3.1.3 | 概览、用户审核、更换管理模块 | 5d | 2018-03-14 | 2018-03-20 |  | 3d |  | 苑逢瑞 | 40h |
| 22 | 3.2 | **后端03** | 5d | 2018-03-12 | 2018-03-16 | 14 | 12d | 0d |  | 80h |
| 23 | 3.2.1 | 后端接口 | 5d | 2018-03-12 | 2018-03-16 |  | 12d |  | 谢发扬 | 40h |
| 24 | 3.2.2 | 后端接口 | 5d | 2018-03-12 | 2018-03-16 |  | 12d |  | 程东东 | 40h |

| ID | WBS | Task | Duration | Start | Finish | Predecessors | Total slack | Constraint | Resources | Work |
| --- | --- | --- | --- | --- | --- | --- | --- | --- | --- | --- |
| 25 | 4 | **阶段四 企业管理、企业数据** | 16d | 2018-03-19 | 2018-04-10 |  | 0d |  |  | 320h |
| 26 | 4.1 | **前端04** | 11d | 2018-03-26 | 2018-04-10 | 18 | 0d |  |  | 240h |
| 27 | 4.1.1 | 部门管理、图表组件等 | 9d | 2018-03-26 | 2018-04-06 |  | 2d |  | 高峰 | 80h |
| 28 | 4.1.2 | 用户管理、登录日志、操作日志 | 8d | 2018-03-26 | 2018-04-04 |  | 3d |  | 于利龙 | 64h |
| 29 | 4.1.3 | 用户审核、企业设置、更换管理员、统计信息 | 11d | 2018-03-26 | 2018-04-10 |  | 0d | start no earlier than 2018-03-26 | 苑逢瑞 | 96h |
| 30 | 4.2 | **后端04** | 5d | 2018-03-19 | 2018-03-23 | 22 | 11d |  |  | 80h |
| 31 | 4.2.1 | 后端接口 | 5d | 2018-03-19 | 2018-03-23 |  | 11d |  | 谢发扬 | 40h |
| 32 | 4.2.2 | 后端接口 | 5d | 2018-03-19 | 2018-03-23 |  | 11d |  | 程东东 | 40h |
| 33 | 5 | **阶段五 bug修复阶段** | 5d | 2018-04-11 | 2018-04-17 | 25 | 0d |  |  | 200h |
| 34 | 5.1 | 前端bug | 5d | 2018-04-11 | 2018-04-17 |  | 0d |  | 高峰; 于利龙; 苑逢瑞 | 120h |
| 35 | 5.2 | 后端bug | 5d | 2018-04-11 | 2018-04-17 |  | 0d |  | 程东东; 谢发扬 | 80h |
